Schedule from MS Project, 2014-10-03 to 2014-11-26, A marks actual dates.

## Calendars

- Standard: Mon-Fri 08:00-12:00, 13:00-17:00; Sat-Sun off. Exceptions (off unless hours are given): 2014-11-01 to 2014-11-02 08:00-12:00, 13:00-17:00.

## Resources

| Resource |
| --- |
| Gabriel Alexandre |
| Vinicius Edmar |
| Cliente |
| Gabriel Alexandre Vinicius Edmar |
| Vinicius Alexandre |
| Alexandre Gabriel |
| Alexandre Vinicius |
| Alexandre Vinicuis |
| Alexandre Edmar |
| Cccc |
| Gabriel Vinicius |
| Daniel Alexandre |
| Edmar Gabriel |
| Daniel Vinicuis |
| Daniel Gabriel |
| Gabriel Alexandre Vinicius Edmar Daniel |
| Vinicius Daniel |
| Gabriel Daniel |
| Gabriel Edmar |
| Vinicuis Daniel |
| Alexandre |

## Schedule

| ID | WBS | Task | Type | Duration | Start | Finish | Predecessors | Complete | Remaining | Total slack | Free slack | Constraint | Resources | Work | Actual work |
| --- | --- | --- | --- | --- | --- | --- | --- | --- | --- | --- | --- | --- | --- | --- | --- |
| 1 | 1 | **Proposta** |  | 20d | 2014-10-03 | 2014-10-30 |  |  |  | 1d |  |  |  | 160h |  |
| 2 | 1.1 | Reunião com o cliente |  | 1d | 2014-10-03 | 2014-10-03 |  |  |  | 1.67d | 0d | start no earlier than 2014-10-03 | Gabriel Daniel | 8h |  |
| 3 | 1.2 | Proposta técnica | manual | 1d | 2014-10-06 | 2014-10-06 | 2 |  |  |  |  |  | Vinicius Edmar | 8h |  |
| 4 | 1.3 | Validação Proposta |  | 1d | 2014-10-07 | 2014-10-07 | 3 |  |  | 1.67d | 0d | start no earlier than 2014-10-03 | Cliente | 8h |  |
| 5 | 1.4 | Documento de Requisitos | manual | 14d | 2014-10-08 | 2014-10-27 | 4 |  |  |  |  |  | Gabriel Alexandre Vinicius Edmar Daniel | 112h |  |
| 6 | 1.5 | Validação de Documento de Requisitos |  | 1d | 2014-10-28 | 2014-10-28 | 5 |  |  | 1.67d | 0d | start no earlier than 2014-10-28 | Cliente | 8h |  |
| 7 | 1.6 | Matriz de Rastreabilidade |  | 2d | 2014-10-29 | 2014-10-30 | 6 |  |  | 1.67d | 1d |  | Vinicius Daniel | 16h |  |
| 8 | 2 | **Implementação** |  | 18d? | 2014-11-01 A | 2014-11-24 | 1 | 4% | 17.33d? | 0d |  |  |  | 208h | 8h |
| 9 | 2.1 | Banco de dados Tela de Login |  | 1d | 2014-11-01 | 2014-11-01 | 6 |  |  | 14d | 0d | start no earlier than 2014-11-01 | Alexandre Gabriel | 8h |  |
| 10 | 2.2 | Tela de Login |  | 2d | 2014-11-02 | 2014-11-03 | 9 |  |  | 14d | 0d |  | Alexandre Gabriel | 16h |  |
| 11 | 2.3 | Banco de Dados Manter Jogos |  | 1d | 2014-11-01 | 2014-11-01 | 6 |  |  | 13d | 0d | start no earlier than 2014-11-01 | Alexandre Vinicius | 8h |  |
| 12 | 2.4 | Manter Jogos |  | 2d | 2014-11-02 | 2014-11-03 | 11 |  |  | 13d | 0d | start no earlier than 2014-11-02 | Alexandre Vinicuis | 16h |  |
| 13 | 2.5 | Banco de Dados Manter Usuários de Sistema |  | 1d | 2014-11-01 | 2014-11-01 | 7 |  |  | 13d | 0d | start no earlier than 2014-11-01 | Alexandre Edmar | 8h |  |
| 14 | 2.6 | Manter Usuários de Sistema |  | 2d | 2014-11-02 | 2014-11-03 | 13 |  |  | 13d | 0d |  | Alexandre Edmar | 16h |  |
| 15 | 2.7 | Testes Dunit |  | 1d | 2014-11-04 | 2014-11-04 | 10, 12, 14 |  |  | 14d |  |  | Alexandre Edmar | 8h |  |
| 16 | 2.8 | Banco de Dados Manter Funcionários |  | 1d | 2014-11-05 | 2014-11-05 | 7 |  |  | 10d | 0d | start no earlier than 2014-11-05 | Gabriel Vinicius | 8h |  |
| 17 | 2.9 | Manter Funcionários |  | 2d | 2014-11-06 | 2014-11-07 | 16 |  |  | 10d | 0d |  | Gabriel Vinicius | 16h |  |
| 18 | 2.10 | Banco de Dados Empresas |  | 1d | 2014-11-05 | 2014-11-05 | 6 |  |  | 10d | 0d | start no earlier than 2014-11-05 | Daniel Alexandre | 8h |  |
| 19 | 2.11 | Mater Empresas |  | 2d | 2014-11-06 | 2014-11-07 | 18 |  |  | 10d | 0d |  | Daniel Alexandre | 16h |  |
| 20 | 2.12 | Testes Dunit |  | 1d | 2014-11-10 | 2014-11-10 | 19, 17 |  |  | 10d |  |  | Gabriel Vinicius | 8h |  |
| 21 | 2.13 | Relatório de Jogos |  | 2d | 2014-11-13 | 2014-11-14 | 12 |  |  | 6d |  | start no earlier than 2014-11-13 | Daniel Vinicuis | 16h |  |
| 22 | 2.14 | Relatório de Usuário de Sistema |  | 2d | 2014-11-13 | 2014-11-14 | 14 |  |  | 6d |  | start no earlier than 2014-11-13 | Daniel Gabriel | 16h |  |
| 23 | 2.15 | Banco de Dados Manter Vendas |  | 1d | 2014-11-17 A | 2014-11-17 A |  | 100% |  |  |  | start no earlier than 2014-11-02 | Gabriel Edmar | 8h | 8h |
| 24 | 2.16 | Manter Vendas |  | 2d | 2014-11-18 | 2014-11-19 | 23 |  |  | 0d |  | start no earlier than 2014-11-18 | Gabriel Edmar | 16h |  |
| 25 | 2.17 | Relatório de Vendas |  | 2d | 2014-11-20 | 2014-11-21 | 24 |  |  | 0d |  |  | Vinicuis Daniel | 16h |  |
| 26 | 2.18 | Testes Dunit |  | 1d? | 2014-11-24 | 2014-11-24 | 25 |  |  | 0d |  |  |  |  |  |

| ID | WBS | Task | Duration | Start | Finish | Predecessors | Total slack | Constraint | Resources | Work |
| --- | --- | --- | --- | --- | --- | --- | --- | --- | --- | --- |
| 27 | 3 | **Finalização** | 2d | 2014-11-25 | 2014-11-26 | 8 |  |  |  | 16h |
| 29 | 3.1 | Melhorar Interface | 2d | 2014-11-25 | 2014-11-26 |  | 0d | start no earlier than 2014-11-25 | Alexandre | 16h |
